# PROYECTO SERVIN

Schedule from MS Project, 2016-03-28 to 2018-07-11, costs in $, A marks actual dates.

## Calendars

- Estándar: Mon-Fri 07:00-13:00, 14:00-17:00; Sat 07:00-10:00; Sun off. Exceptions (off unless hours are given): 2016-05-09 (1 FESTIVO MAYO), 2016-05-30 (2 FESTIVO MAYO), 2016-06-06 (1 FESTIVO JUNIO), 2016-07-04 (1 FESTIVO JULIO), 2016-07-20 (2 FESTIVO JULIO), 2016-08-15 (1 FESTIVO AGOSTO), 2016-10-17 (1 FESTIVO OCTUBRE), 2016-11-07 (DIA DE LA RAZA 2015), 2016-11-14 (INDEPENDENCIA DE CARTAGENA 2015), 2016-12-08 (DIA DE LA INMACULADA 2015), 2017-01-09 (DIA DE LOS REYES MAGOS 2017), 2017-03-20 (DIA DE SAN JOSE 2017), 2017-04-13 (JUEVES SANTO 2017), 2017-04-14 (VIERNES SANTO 2017), 2017-05-01 (DIA DEL TRABAJO 2017), 2017-05-29 (DIA DE LA ASCENCION 2017), 2017-06-19 (CORPUS CRISPI 2017), 2017-06-26 (SAGRADO CORAZON 2017), 2017-07-03 (SAN PEDRO Y SAN PALBLO 2017), 2017-07-20 (DIA DE LA INDEPENDENCIA 2017), 2017-08-07 (BATALLA DE BOYACA 2017), 2017-08-21 (LA ASUNCION DE LA VIRGEN 2017), 2017-10-16 (DIA DE LA RAZA 2017), 2017-11-06 (TODOS LOS SANTOS 2017), 2017-11-13 (INDEPENDENCIA DE CARTAGENA 2017), 2017-12-08 (DIA DE LA INMACULADA 2017), 2017-12-25 (NAVIDAD 2017).

## Resources

| Resource | Unit | Rate | Cost per use |
| --- | --- | --- | --- |
| Programador1 |  | 4500 |  |
| Programador2 |  | 4500 |  |
| Programador3 |  | 4500 |  |
| Diseñador |  | 4500 |  |
| Arriendo |  | 1750 |  |
| Agua |  |  |  |
| Luz |  |  |  |
| Servidor |  | 3000000 |  |
| Computador-programador1 |  |  | 1500000 |
| Computador-programador2 |  |  | 1500000 |
| Computador-programador3 |  |  | 1500000 |
| Computador-diseñador |  |  | 1500000 |
| Computador 1 Carpas | Computador DELL | 1100000 |  |
| Licencia Windows | Server R12 2002 | 285600 |  |
| Internet |  |  |  |

## Schedule

| ID | WBS | Task | Duration | Start | Finish | Predecessors | Complete | Remaining | Actual start | Total slack | Resources | Work | Actual work | Cost | Actual cost |
| --- | --- | --- | --- | --- | --- | --- | --- | --- | --- | --- | --- | --- | --- | --- | --- |
| 1 | 1 | **Proyecto servin** | 601.5d | 2016-07-11 | 2018-07-11 |  | 80% | 121.3d | 2016-03-28 |  |  | 1757h | 1472h | 15,898,500 | 13,188,000 |
| 2 | 1.1 | **Fase analisis** | 52.88d | 2016-03-28 A | 2016-05-30 A |  | 100% |  |  |  |  | 648h | 648h | 9,480,000 | 9,480,000 |
| 3 | 1.1.1 | **Busqueda empresa** | 28.5d | 2016-03-28 A | 2016-04-28 A |  | 100% |  |  |  |  | 424h | 424h | 5,724,000 | 5,724,000 |
| 4 | 1.1.1.1 | Busqueda cliente | 1.67w | 2016-03-28 A | 2016-04-04 A |  | 100% |  |  |  | Computador-programador1; Programador1 | 96h | 96h | 1,716,000 | 1,716,000 |
| 5 | 1.1.1.2 | Analisis del mercado | 1.67w | 2016-04-04 A | 2016-04-12 A | 4 | 100% |  |  |  | Computador-programador2; Programador2 | 96h | 96h | 1,716,000 | 1,716,000 |
| 6 | 1.1.1.3 | Contactar con el cliente | 12d | 2016-04-12 A | 2016-04-21 A | 5 | 100% |  |  |  | Computador-programador3; Programador3 | 112h | 112h | 1,752,000 | 1,752,000 |
| 7 | 1.1.1.4 | Plantear el proyecto SENA para convencer al cliente | 5d | 2016-04-22 A | 2016-04-28 A | 6 | 100% |  |  |  | Programador1; Programador2; Programador3 | 120h | 120h | 540,000 | 540,000 |
| 8 | 1.1.2 | **Recoleccion de la informacion** | 7.25d | 2016-04-29 A | 2016-05-09 A |  | 100% |  |  |  |  | 104h | 104h | 3,216,000 | 3,216,000 |
| 9 | 1.1.2.1 | Realizar visita para detectar la necesidad | 5d | 2016-04-29 A | 2016-05-05 A | 7 | 100% |  |  |  | Programador1 | 40h | 40h | 180,000 | 180,000 |
| 10 | 1.1.2.2 | Realizacion encuestas, preguntas para entrevista y observacion. | 5d | 2016-05-05 A | 2016-05-07 A | 9 | 100% |  |  |  | Computador-programador2 | 40h | 40h | 1,500,000 | 1,500,000 |
| 11 | 1.1.2.3 | Reunion para socializacion de temas y organización | 2d | 2016-05-07 A | 2016-05-08 A | 10 | 100% |  |  |  | Computador-programador3 | 16h | 16h | 1,500,000 | 1,500,000 |
| 12 | 1.1.2.4 | Revision tecnologia actual. | 1d | 2016-05-09 A | 2016-05-09 A | 11 | 100% |  |  |  | Programador1 | 8h | 8h | 36,000 | 36,000 |
| 13 | 1.1.3 | **Presentacion proyecto** | 8d | 2016-05-10 A | 2016-05-18 A |  | 100% |  |  |  |  | 56h | 56h | 252,000 | 252,000 |
| 14 | 1.1.3.1 | Compilar la informacion. | 1d | 2016-05-10 A | 2016-05-10 A | 12 | 100% |  |  |  | Programador1 | 8h | 8h | 36,000 | 36,000 |
| 15 | 1.1.3.2 | Realizacion informes. | 4d | 2016-05-11 A | 2016-05-16 A | 14 | 100% |  |  |  | Programador2 | 32h | 32h | 144,000 | 144,000 |
| 16 | 1.1.3.3 | Presentacion del proyecto a la empresa para aval | 2d | 2016-05-17 A | 2016-05-18 A | 15 | 100% |  |  |  | Programador3 | 16h | 16h | 72,000 | 72,000 |
| 17 | 1.1.4 | **Elaboracion mapa procesos.** | 5.75d | 2016-05-19 A | 2016-05-25 A |  | 100% |  |  |  |  | 40h | 40h | 180,000 | 180,000 |
| 18 | 1.1.4.1 | Analisis de la informacion recopilada. | 2d | 2016-05-19 A | 2016-05-20 A | 16 | 100% |  |  |  | Programador1 | 16h | 16h | 72,000 | 72,000 |
| 19 | 1.1.4.2 | Realizacion de mapa de procesos en herramienta visio | 3d | 2016-05-23 A | 2016-05-25 A | 18 | 100% |  |  |  | Programador2 | 24h | 24h | 108,000 | 108,000 |
| 20 | 1.1.5 | **Informe de hardware y software con el que cuenta el cliente.** | 2.38d | 2016-05-26 A | 2016-05-30 A |  | 100% |  |  |  |  | 24h | 24h | 108,000 | 108,000 |
| 21 | 1.1.5.1 | Cotizacion de los equipos para el cliente. | 1d | 2016-05-26 A | 2016-05-26 A | 19 | 100% |  |  |  | Programador1 | 8h | 8h | 36,000 | 36,000 |
| 22 | 1.1.5.2 | Realizacion de informe. | 2d | 2016-05-27 A | 2016-05-30 A | 21 | 100% |  |  |  | Programador3 | 16h | 16h | 72,000 | 72,000 |
| 23 | 1.2 | **Fase planeacion** | 129.38d? | 2016-05-31 A | 2016-11-03 |  | 68% | 40.79d? |  | 504.5d |  | 1109h | 824h | 6,418,500 | 3,708,000 |
| 24 | 1.2.1 | **Informe de requerimientos** | 14d | 2016-05-31 A | 2016-06-16 A |  | 100% |  |  |  |  | 104h | 104h | 468,000 | 468,000 |
| 25 | 1.2.1.1 | Analisis de informacion brindada por el cliente. | 5d | 2016-05-31 A | 2016-06-06 A | 22 | 100% |  |  |  | Programador3 | 40h | 40h | 180,000 | 180,000 |
| 26 | 1.2.1.2 | Realizacion de informe estandar IEEE. | 8d | 2016-06-07 A | 2016-06-16 A | 25 | 100% |  |  |  | Programador2 | 64h | 64h | 288,000 | 288,000 |

| ID | WBS | Task | Duration | Start | Finish | Predecessors | Complete | Remaining | Total slack | Free slack | Resources | Work | Actual work | Cost | Actual cost |
| --- | --- | --- | --- | --- | --- | --- | --- | --- | --- | --- | --- | --- | --- | --- | --- |
| 27 | 1.2.2 | **Casos de uso** | 26.38d? | 2016-06-17 A | 2016-07-20 |  | 96% | 1.05d? | 593.25d |  |  | 192h | 192h | 864,000 | 864,000 |
| 28 | 1.2.2.1 | Analisis de los casos de uso que se utilizaran en el sistema. | 2w | 2016-06-17 A | 2016-07-04 A | 26 | 100% |  |  |  | Programador2 | 96h | 96h | 432,000 | 432,000 |
| 29 | 1.2.2.2 | Diagramacion de los casos de uso con software grafico. | 2w | 2016-07-05 A | 2016-07-20 A | 28 | 100% |  |  |  | Programador3 | 96h | 96h | 432,000 | 432,000 |
| 30 | 1.2.2.3 | Documentacion de los casos de uso extendidos | 1d? | 2016-07-11 | 2016-07-11 |  |  |  | 600.5d |  |  |  |  |  |  |
| 31 | 1.2.3 | **Modelo entidad relacion** | 20.38d | 2016-07-21 A | 2016-08-15 A |  | 100% |  |  |  |  | 336h | 336h | 1,512,000 | 1,512,000 |
| 32 | 1.2.3.1 | Modelado de base de datos en MySQL | 2w | 2016-07-21 A | 2016-08-05 A | 29 | 100% |  |  |  | Programador1; Programador2; Programador3 | 288h | 288h | 1,296,000 | 1,296,000 |
| 33 | 1.2.3.2 | Creacion de diccionario de datos. | 1w | 2016-08-08 A | 2016-08-15 A | 32 | 100% |  |  |  | Programador2 | 48h | 48h | 216,000 | 216,000 |
| 34 | 1.2.4 | **Creacion base de datos** | 28.25d | 2016-08-16 A | 2016-09-16 A |  | 100% |  |  |  |  | 192h | 192h | 864,000 | 864,000 |
| 35 | 1.2.4.1 | Exportación del modelo en workbench a SQL | 1w | 2016-08-16 A | 2016-08-23 A | 33 | 100% |  |  |  | Programador1 | 48h | 48h | 216,000 | 216,000 |
| 36 | 1.2.4.2 | Inserción de datos recopilados a la base de datos. | 1w | 2016-08-24 A | 2016-08-31 A | 35 | 100% |  |  |  | Programador2 | 48h | 48h | 216,000 | 216,000 |
| 37 | 1.2.4.3 | Creacion de consultas a la base de datos con JOINS. | 2w | 2016-09-01 A | 2016-09-16 A | 36 | 100% |  |  |  | Programador3 | 96h | 96h | 432,000 | 432,000 |
| 38 | 1.2.5 | **Diagrama de distribución** | 8d | 2016-09-19 | 2016-09-27 |  |  |  | 503d |  |  | 56h |  | 252,000 |  |
| 39 | 1.2.5.1 | Analisis del entorno en carpas madrigal. | 2d | 2016-09-19 | 2016-09-20 | 37 |  |  | 503d | 0.25d | Programador1 | 16h |  | 72,000 |  |
| 40 | 1.2.5.2 | Creacion de diagrama de distribución. | 5d | 2016-09-21 | 2016-09-27 | 39 |  |  | 503.38d | 0.25d | Programador2 | 40h |  | 180,000 |  |
| 41 | 1.2.6 | **Diagrama de clases** | 16.62d | 2016-09-28 | 2016-10-18 |  |  |  | 503.38d |  |  | 120h |  | 540,000 |  |
| 42 | 1.2.6.1 | Analisis de informacion recolectada. | 2d | 2016-09-28 | 2016-09-29 | 40 |  |  | 503.38d | 0.25d | Programador1 | 16h |  | 72,000 |  |
| 43 | 1.2.6.2 | Creacion de clases del proyecto. | 6d | 2016-09-30 | 2016-10-07 | 42 |  |  | 503.38d | 0.62d | Programador2 | 48h |  | 216,000 |  |
| 44 | 1.2.6.3 | Relacion de las clases | 3d | 2016-10-10 | 2016-10-12 | 43 |  |  | 503d | 0.25d | Programador3 | 24h |  | 108,000 |  |
| 45 | 1.2.6.4 | Presentacion de clases en herramienta grafica. | 4d | 2016-10-13 | 2016-10-18 | 44 |  |  | 503.38d | 0d | Diseñador | 32h |  | 144,000 |  |
| 46 | 1.2.7 | **Prototipo** | 14.12d | 2016-10-18 | 2016-11-03 |  |  |  | 504.5d |  |  | 109h |  | 1,918,500 |  |
| 47 | 1.2.7.1 | Analisis de entorno grafico que se va a utilizar | 3.38d | 2016-10-18 | 2016-10-20 | 45 |  |  | 504.5d | 0d | Diseñador; Computador-diseñador | 29h |  | 1,558,500 |  |
| 48 | 1.2.7.2 | Creacion muckups | 1w | 2016-10-20 | 2016-10-28 | 47 |  |  | 504.5d | 0d | Diseñador | 48h |  | 216,000 |  |
| 49 | 1.2.7.3 | Creacion prueba en html, css y php | 4d | 2016-10-28 | 2016-11-03 | 48 |  |  | 504.5d |  | Diseñador | 32h |  | 144,000 |  |
